# 公共平台开发部

Schedule from a web Gantt chart, 2024-01-01 to 2024-12-30.
Saturdays and Sundays are off

## Schedule

| ID | WBS | Task | Duration | Start | Finish | Complete | inPeople | Status |
| --- | --- | --- | --- | --- | --- | --- | --- | --- |
| 2 | 1 | **辅助服务网关** | 261d | 2024-01-01 | 2024-12-30 | 22% | 陶晨涛 | waiting |
| 3 | 1.1 | 日常接入各地虚拟电厂平台 | 261d | 2024-01-01 | 2024-12-30 | 30% | 陶晨涛 | waiting |
| 4 | 1.2 | 监控告警服务开发与地区接入 | 87d | 2024-03-01 | 2024-07-01 |  | 陶晨涛 | waiting |
| 5 | 2 | **能量云公共平台** | 44d | 2024-03-01 | 2024-05-01 | 45% | 吴志勇 | done |
| 6 | 2.1 | 需求评审 | 11d | 2024-03-01 | 2024-03-15 | 100% | 吴志勇 | done |
| 7 | 2.2 | 单点登录和控制台原型图绘制 | 22d | 2024-03-01 | 2024-04-01 |  | 吴凯江、丛晓琪 | done |
| 8 | 2.3 | 单点登录 | 44d | 2024-03-01 | 2024-05-01 | 100% | 吴凯江 | done |
| 9 | 2.4 | 门户公共网关开发 | 44d | 2024-03-01 | 2024-05-01 |  | 丛晓琪 | done |
| 10 | 3 | **虚拟电厂平台** | 153d | 2024-01-01 | 2024-07-31 | 61% |  | failed |
| 11 | 3.1 | 虚拟电厂平台原型图绘制 | 66d | 2024-01-01 | 2024-04-01 | 100% | 丛晓琪 | failed |
| 12 | 3.2 | 虚拟电厂平台网关开发 | 110d | 2024-01-01 | 2024-05-31 | 80% | 丛晓琪 | failed |
| 13 | 3.3 | 虚拟电厂平台集成单点登录 | 43d | 2024-03-01 | 2024-04-30 | 100% | 丛晓琪 | failed |
| 14 | 3.4 | 虚拟电厂平台前置网关 | 153d | 2024-01-01 | 2024-07-31 | 20% | 吴志勇、丛晓琪 | failed |
| 15 | 4 | **微网能量云** | 175d | 2024-01-01 | 2024-08-30 | 58% |  |  |
| 16 | 4.1 | 微网网关代码重构 | 131d | 2024-01-01 | 2024-07-01 | 100% | 吴凯江 |  |
| 17 | 4.2 | 微网网关集成单点登录 | 22d | 2024-03-01 | 2024-04-01 | 100% | 吴凯江 |  |
| 18 | 4.3 | 微网网关测试环境测试 | 88d | 2024-04-01 | 2024-07-31 |  | 吴凯江 |  |
| 19 | 4.4 | 微网网关生产环境升级 | 22d | 2024-08-01 | 2024-08-30 |  | 吴凯江 |  |
| 20 | 5 | **其他行动项** | 120d | 2024-03-18 | 2024-08-30 |  |  | waiting |
| 21 | 5.1 | TDengine研究及升级部署 | 15d | 2024-04-01 | 2024-04-19 |  | 吴志勇 | waiting |
| 22 | 5.2 | 华为云服务器扩容-微网 | 21d | 2024-03-18 | 2024-04-15 |  | 吴志勇 | waiting |
| 23 | 5.3 | 华为云服务器扩容-虚拟电厂平台 | 22d | 2024-08-01 | 2024-08-30 |  | 吴志勇 | waiting |
